# DC module

Schedule from a web Gantt chart, 2026-08-19 to 2026-11-13.
Every day is a working day

## Schedule

| ID | WBS | Task | Type | Duration | Start | Finish | Complete | Status |
| --- | --- | --- | --- | --- | --- | --- | --- | --- |
| 2 | 1 | **0. SDV rework** | fixed start, fixed end | 20d | 2026-08-19 | 2026-09-07 | 51% |  |
| 3 | 1.1 | Plan A: 增加锡重新回流 |  | 1d | 2026-08-19 | 2026-08-19 | 100% | failed |
| 4 | 1.2 | Plan B：小锡炉返修 |  | 1d | 2026-08-19 | 2026-08-19 | 100% | failed |
| 5 | 1.3 | **Plan C: 波峰焊返修** |  | 14d | 2026-08-25 | 2026-09-07 | 47% |  |
| 6 | 1.3.1 | C.1 波峰焊治具到达 |  | 1d | 2026-08-25 | 2026-08-25 | 100% | done |
| 7 | 1.3.2 | C.2 验证 |  | 3d | 2026-08-25 | 2026-08-27 | 100% | done |
| 8 | 1.3.3 | C.3 返修 |  | 3d | 2026-08-25 | 2026-08-27 | 100% |  |
| 9 | 1.3.4 | C.4 出货 |  | 14d | 2026-08-25 | 2026-09-07 | 20% |  |
| 10 | 2 | **1. SDV-SIT DC module soldering study** | fixed start, fixed end | 81d | 2026-08-25 | 2026-11-13 | 4% |  |
| 11 | 2.1 | **1.1 ReGerber 评估** |  | 51d | 2026-08-25 | 2026-10-14 | 5% |  |
| 12 | 2.1.1 | 1.1.1 建议减少PTH连接的铜面层数 |  | 3d | 2026-08-25 | 2026-08-27 | 100% | done |
| 13 | 2.1.2 | 1.1.2 Placement底面元器件避让 |  | 10d | 2026-08-25 | 2026-09-03 |  |  |
| 14 | 2.1.3 | 1.1.3 G.O |  | 3d | 2026-09-02 | 2026-09-04 |  | waiting |
| 15 | 2.1.4 | 1.1.4 PCB生产 |  | 27d | 2026-09-04 | 2026-09-30 |  | waiting |
| 16 | 2.1.5 | 1.14 PCB运送 |  | 14d | 2026-10-01 | 2026-10-14 |  |  |
| 17 | 2.2 | **1.2 验证器件调拨** |  | 1d | 2026-09-02 | 2026-09-02 |  |  |
| 18 | 2.2.1 | 1.2.1 DC module调拨 |  | 1d | 2026-09-02 | 2026-09-02 |  |  |
| 19 | 2.2.2 | 1.2.2 电解电容调拨 |  | 1d | 2026-09-02 | 2026-09-02 |  |  |
| 20 | 2.2.3 | 1.2.3 器件运送 |  | 1d | 2026-09-02 | 2026-09-02 |  |  |
| 21 | 2.3 | Plan A: 波峰焊验证 | fixed start, fixed end | 51d | 2026-09-03 | 2026-10-23 |  |  |
| 22 | 2.4 | **A.1电解电容/DCmodule物资调拨** |  | 1d | 2026-09-15 | 2026-09-15 |  |  |
| 23 | 2.4.1 | A.1 锡条、无卤助焊剂调拨 |  | 50d | 2026-09-03 | 2026-10-22 |  |  |
| 24 | 2.4.2 | A.1 波峰焊治具 |  | 15d | 2026-09-15 | 2026-09-29 |  |  |
| 25 | 2.5 | A 验证 |  | 2d | 2026-10-22 | 2026-10-23 |  | waiting |

Notes:
- 3: 无效果，锡在PTH孔外融化
- 4: 小锡炉放置区域无380V供电
- 7: 炉温验证Pass,部分焊点拉尖，已经增加手动维修；
- 8: 全部返修完成
- 9: 17/55 全部测试 pass;
- 12: √，已评估完成，可以减少3层
- 13: 评估中
- 15: 18 pcs
- 22: PCB 2pcs调拨中，正在寻找报关途径

| ID | WBS | Task | Type | Duration | Start | Finish | Complete | Status |
| --- | --- | --- | --- | --- | --- | --- | --- | --- |
| 26 | 2.6 | **Plan B: 回流焊验证** | fixed start, fixed end | 41d | 2026-08-25 | 2026-10-04 | 9% |  |
| 27 | 2.6.1 | B.1 PCB/电解电容/DCmodule物资调拨 |  | 20d | 2026-08-25 | 2026-09-13 | 20% |  |
| 28 | 2.6.2 | B.1 扩大钢网开孔 |  | 15d | 2026-08-25 | 2026-09-08 |  |  |
| 29 | 2.6.3 | B.1 治具增加合成石挡块（3mm&5mm) |  | 20d | 2026-08-25 | 2026-09-13 |  |  |
| 30 | 2.6.4 | B.1 线体调配 |  | 1d | 2026-09-10 | 2026-09-10 |  |  |
| 31 | 2.6.5 | B.1 验证 |  | 2d | 2026-09-11 | 2026-09-12 |  | waiting |
| 32 | 2.6.6 | B.2 建议减少PTH连接的铜面层数 |  | 3d | 2026-08-26 | 2026-08-28 |  |  |
| 33 | 2.6.7 | B.2 建议缩短Pin长度 |  | 4d | 2026-08-25 | 2026-08-28 | 50% | failed |
| 34 | 2.6.8 | B.2 线体调配 |  | 1d | 2026-10-04 | 2026-10-04 |  |  |
| 35 | 2.6.9 | B.2验证 |  | 1d | 2026-10-04 | 2026-10-04 |  | waiting |
| 36 | 2.7 | SIT Build |  | 1d | 2026-11-13 | 2026-11-13 | 100% | done |

Notes:
- 27: 。
- 32: √
- 33: 厂家已经备料，无法调整
